Schedule from GanttProject, 2025-09-16 to 2026-02-06.

## Calendars

- Project calendar: Mon-Fri working; Sat-Sun off.

## Resources

| Resource | Group |
| --- | --- |
| Víctor Sánchez Valencia | Desarrollador |
| Clara Ruiz de las Heras | Desarrollador |
| Miguel Barrigón Gómez | Desarrollador |
| Mario Medrano Paredes | Desarrollador |

## Schedule

| ID | WBS | Task | Duration | Start | Finish |
| --- | --- | --- | --- | --- | --- |
| 1 | 1 | **TP1:SE** | 103d | 2025-09-16 | 2026-02-05 |
| 2 | 1.1 | **Especificación del proyecto** | 4d | 2025-09-16 | 2025-09-19 |
| 3 | 1.1.1 | Definción de objetivos | 4d | 2025-09-16 | 2025-09-19 |
| 4 | 1.1.2 | Estudio del sistema | 4d | 2025-09-16 | 2025-09-19 |
| 5 | 1.2 | **PCB0: Diseño electronico y captura esquematica PCB0** | 1d | 2025-09-19 | 2025-09-19 |
| 6 | 1.2.1 | Busqueda de componentes | 1d | 2025-09-19 | 2025-09-19 |
| 7 | 1.2.2 | Posicionamiento componentes | 1d | 2025-09-19 | 2025-09-19 |
| 8 | 1.2.3 | Creación de nuevos componentes | 1d | 2025-09-19 | 2025-09-19 |
| 9 | 1.2.4 | Documentación esquemático. Control de cambios | 1d | 2025-09-19 | 2025-09-19 |
| 10 | 1.2.5 | Análisis consumo eléctrico | 1d | 2025-09-19 | 2025-09-19 |
| 11 | 1.2.6 | Análisis disipación de potencia | 1d | 2025-09-19 | 2025-09-19 |
| 12 | 1.2.7 | Rutado de conexiones | 1d | 2025-09-19 | 2025-09-19 |
| 13 | 1.2.8 | Generación de listado de materiales (BOM) | 1d | 2025-09-19 | 2025-09-19 |
| 14 | 1.3 | **PCB1:Diseño electrónico y captura esquemática** | 1d | 2025-09-19 | 2025-09-19 |
| 15 | 1.3.1 | Búsqueda de componentes | 1d | 2025-09-19 | 2025-09-19 |
| 16 | 1.3.2 | Posicionado componentes | 1d | 2025-09-19 | 2025-09-19 |
| 17 | 1.3.3 | Creación de nuevos componentes | 1d | 2025-09-19 | 2025-09-19 |
| 18 | 1.3.4 | Documentación esquemático. Control de cambios | 1d | 2025-09-19 | 2025-09-19 |
| 19 | 1.3.5 | Análisis consumo eléctrico | 1d | 2025-09-19 | 2025-09-19 |
| 20 | 1.3.6 | Análisis disipación de potencia | 1d | 2025-09-19 | 2025-09-19 |
| 21 | 1.3.7 | Rutado de conexiones | 1d | 2025-09-19 | 2025-09-19 |
| 22 | 1.3.8 | Generación de listado de materiales (BOM) | 1d | 2025-09-19 | 2025-09-19 |
| 23 | 1.4 | **PCB2 :Diseño electrónico y captura esquemática** | 1d | 2025-09-19 | 2025-09-19 |
| 24 | 1.4.1 | Búsqueda de componentes | 1d | 2025-09-19 | 2025-09-19 |
| 25 | 1.4.2 | Posicionado componentes | 1d | 2025-09-19 | 2025-09-19 |
| 26 | 1.4.3 | Creación de nuevos componentes | 1d | 2025-09-19 | 2025-09-19 |
| 27 | 1.4.4 | Documentación esquemático. Control de cambios | 1d | 2025-09-19 | 2025-09-19 |
| 28 | 1.4.5 | Análisis consumo eléctrico | 1d | 2025-09-19 | 2025-09-19 |
| 29 | 1.4.6 | Análisis disipación de potencia | 1d | 2025-09-19 | 2025-09-19 |
| 30 | 1.4.7 | Rutado de conexiones | 1d | 2025-09-19 | 2025-09-19 |
| 31 | 1.4.8 | Generación de listado de materiales (BOM) | 1d | 2025-09-19 | 2025-09-19 |

| ID | WBS | Task | Duration | Start | Finish |
| --- | --- | --- | --- | --- | --- |
| 32 | 1.5 | **PCB3:Diseño electrónico y captura esquemática** | 1d | 2025-09-19 | 2025-09-19 |
| 33 | 1.5.1 | Búsqueda de componentes | 1d | 2025-09-19 | 2025-09-19 |
| 34 | 1.5.2 | Posicionado componentes | 1d | 2025-09-19 | 2025-09-19 |
| 35 | 1.5.3 | Creación de nuevos componentes | 1d | 2025-09-19 | 2025-09-19 |
| 36 | 1.5.4 | Documentación esquemático. Control de cambios | 1d | 2025-09-19 | 2025-09-19 |
| 37 | 1.5.5 | Análisis consumo eléctrico | 1d | 2025-09-19 | 2025-09-19 |
| 38 | 1.5.6 | Análisis disipación de potencia | 1d | 2025-09-19 | 2025-09-19 |
| 39 | 1.5.7 | Rutado de conexiones | 1d | 2025-09-19 | 2025-09-19 |
| 40 | 1.5.8 | Generación de listado de materiales (BOM) | 1d | 2025-09-19 | 2025-09-19 |
| 41 | 1.6 | **PCB0: Diseño de la placa de circuito impreso** | 1d | 2025-09-19 | 2025-09-19 |
| 42 | 1.6.1 | Creación de huellas de nuevos componentes | 1d | 2025-09-19 | 2025-09-19 |
| 43 | 1.6.2 | Posicionado de componentes | 1d | 2025-09-19 | 2025-09-19 |
| 44 | 1.6.3 | Definición de borde y zonas de conectores | 1d | 2025-09-19 | 2025-09-19 |
| 45 | 1.6.4 | Rutado de conexiones | 1d | 2025-09-19 | 2025-09-19 |
| 46 | 1.6.5 | Planos de disipación térmica | 1d | 2025-09-19 | 2025-09-19 |
| 47 | 1.6.6 | Planos de masa y otros | 1d | 2025-09-19 | 2025-09-19 |
| 48 | 1.6.7 | Documentación: serigrafía. Control de cambios | 1d | 2025-09-19 | 2025-09-19 |
| 49 | 1.6.8 | Documentación: acotaciones geométricas | 1d | 2025-09-19 | 2025-09-19 |
| 50 | 1.6.9 | Generación de ficheros para el fabricante (gerber) | 1d | 2025-09-19 | 2025-09-19 |
| 51 | 1.7 | **PCB1:Diseño de la placa de circuito impreso** | 1d | 2025-09-19 | 2025-09-19 |
| 52 | 1.7.1 | Creación de huellas de nuevos componentes | 1d | 2025-09-19 | 2025-09-19 |
| 53 | 1.7.2 | Posicionado de componentes | 1d | 2025-09-19 | 2025-09-19 |
| 54 | 1.7.3 | Definición de borde y zonas de conectores | 1d | 2025-09-19 | 2025-09-19 |
| 55 | 1.7.4 | Rutado de conexiones | 1d | 2025-09-19 | 2025-09-19 |
| 56 | 1.7.5 | Planos de disipación térmica | 1d | 2025-09-19 | 2025-09-19 |
| 57 | 1.7.6 | Planos de masa y otros | 1d | 2025-09-19 | 2025-09-19 |
| 58 | 1.7.7 | Documentación: serigrafía. Control de cambios | 1d | 2025-09-19 | 2025-09-19 |
| 59 | 1.7.8 | Documentación: acotaciones geométricas | 1d | 2025-09-19 | 2025-09-19 |
| 60 | 1.7.9 | Generación de ficheros para el fabricante (gerber) | 1d | 2025-09-19 | 2025-09-19 |

| ID | WBS | Task | Duration | Start | Finish |
| --- | --- | --- | --- | --- | --- |
| 61 | 1.8 | **PCB2: Diseño de la placa de circuito impreso** | 1d | 2025-09-19 | 2025-09-19 |
| 62 | 1.8.1 | Creación de huellas de nuevos componentes | 1d | 2025-09-19 | 2025-09-19 |
| 63 | 1.8.2 | Posicionado de componentes | 1d | 2025-09-19 | 2025-09-19 |
| 64 | 1.8.3 | Definición de borde y zonas de conectores | 1d | 2025-09-19 | 2025-09-19 |
| 65 | 1.8.4 | Rutado de conexiones | 1d | 2025-09-19 | 2025-09-19 |
| 66 | 1.8.5 | Planos de disipación térmica | 1d | 2025-09-19 | 2025-09-19 |
| 67 | 1.8.6 | Planos de masa y otros | 1d | 2025-09-19 | 2025-09-19 |
| 68 | 1.8.7 | Documentación: serigrafía. Control de cambios | 1d | 2025-09-19 | 2025-09-19 |
| 69 | 1.8.8 | Documentación: acotaciones geométricas | 1d | 2025-09-19 | 2025-09-19 |
| 70 | 1.8.9 | Generación de ficheros para el fabricante (gerber) | 1d | 2025-09-19 | 2025-09-19 |
| 71 | 1.9 | **PCB3: Diseño de la placa de circuito impreso** | 1d | 2025-09-19 | 2025-09-19 |
| 72 | 1.9.1 | Creación de huellas de nuevos componentes | 1d | 2025-09-19 | 2025-09-19 |
| 73 | 1.9.2 | Posicionado de componentes | 1d | 2025-09-19 | 2025-09-19 |
| 74 | 1.9.3 | Definición de borde y zonas de conectores | 1d | 2025-09-19 | 2025-09-19 |
| 75 | 1.9.4 | Rutado de conexiones | 1d | 2025-09-19 | 2025-09-19 |
| 76 | 1.9.5 | Planos de disipación térmica | 1d | 2025-09-19 | 2025-09-19 |
| 77 | 1.9.6 | Planos de masa y otros | 1d | 2025-09-19 | 2025-09-19 |
| 78 | 1.9.7 | Documentación: serigrafía. Control de cambios | 1d | 2025-09-19 | 2025-09-19 |
| 79 | 1.9.8 | Documentación: acotaciones geométricas | 1d | 2025-09-19 | 2025-09-19 |
| 80 | 1.9.9 | Generación de ficheros para el fabricante (gerber) | 1d | 2025-09-19 | 2025-09-19 |
| 81 | 1.10 | **Fabricación de la placa de circuito impreso** | 1d | 2025-09-19 | 2025-09-19 |
| 82 | 1.10.1 | Envío al fabricante | 1d | 2025-09-19 | 2025-09-19 |
| 83 | 1.10.2 | Recepción y revisión | 1d | 2025-09-19 | 2025-09-19 |
| 84 | 1.10.3 | Montaje de componentes | 1d | 2025-09-19 | 2025-09-19 |

| ID | WBS | Task | Type | Duration | Start | Finish |
| --- | --- | --- | --- | --- | --- | --- |
| 85 | 1.11 | **Realización Hardware FPGA.** |  | 1d | 2025-09-19 | 2025-09-19 |
| 86 | 1.11.1 | Core: LarVA. |  | 1d | 2025-09-19 | 2025-09-19 |
| 87 | 1.11.2 | Periféricos: UART0/1/2, SPI0/1, Temporizador, GPOut, GPIn,.. |  | 1d | 2025-09-19 | 2025-09-19 |
| 88 | 1.11.3 | Simulación |  | 1d | 2025-09-19 | 2025-09-19 |
| 89 | 1.12 | **Realización Firmware. Simulación y depuración** |  | 1d | 2025-09-19 | 2025-09-19 |
| 90 | 1.12.1 | Control de elementos hardware: drivers |  | 1d | 2025-09-19 | 2025-09-19 |
| 91 | 1.12.2 | Verificación |  | 1d | 2025-09-19 | 2025-09-19 |
| 92 | 1.12.3 | Programa principal. Especificaciones |  | 1d | 2025-09-19 | 2025-09-19 |
| 93 | 1.12.4 | Documentación firmware. Control de cambios |  | 1d | 2025-09-19 | 2025-09-19 |
| 94 | 1.13 | **Verificación hardware** |  | 1d | 2025-09-19 | 2025-09-19 |
| 95 | 1.13.1 | Verificación inicial |  | 1d | 2025-09-19 | 2025-09-19 |
| 96 | 1.13.2 | Verificación firmware |  | 1d | 2025-09-19 | 2025-09-19 |
| 97 | 1.13.3 | Resolución de problemas |  | 1d | 2025-09-19 | 2025-09-19 |
| 98 | 1.13.4 | Análisis de prestaciones |  | 1d | 2025-09-19 | 2025-09-19 |
| 99 | 1.13.5 | Montaje final. Piezas mecánicas |  | 1d | 2025-09-19 | 2025-09-19 |
| 100 | 1.13.6 | Pruebas de campo |  | 1d | 2025-09-19 | 2025-09-19 |
| 101 | 1.14 | **Documentación** |  | 1d | 2025-09-19 | 2025-09-19 |
| 102 | 1.14.1 | Realización informe |  | 1d | 2025-09-19 | 2025-09-19 |
| 103 | 1.15 | ENTREGA 1 SEMANA | milestone | 0d | 2025-09-19 | 2025-09-19 |
| 104 | 1.16 | ENTREGA 2 SEMANA | milestone | 0d | 2025-09-26 | 2025-09-26 |
| 105 | 1.17 | ENTREGA 3 SEMANA | milestone | 0d | 2025-10-03 | 2025-10-03 |
| 106 | 1.18 | ENTREGA 4 SEMANA | milestone | 0d | 2025-10-10 | 2025-10-10 |
| 107 | 1.19 | ENTREGA 5 SEMANA | milestone | 0d | 2025-10-17 | 2025-10-17 |
| 108 | 1.20 | ENTREGA 6 SEMANA | milestone | 0d | 2025-10-24 | 2025-10-24 |
| 109 | 1.21 | ENTREGA 7 SEMANA | milestone | 0d | 2025-10-31 | 2025-10-31 |
| 110 | 1.22 | ENTREGA 8 SEMANA | milestone | 0d | 2025-11-07 | 2025-11-07 |
| 111 | 1.23 | ENTREGA 9 SEMANA | milestone | 0d | 2025-11-21 | 2025-11-21 |
| 112 | 1.24 | ENTREGA 10 SEMANA | milestone | 0d | 2025-11-28 | 2025-11-28 |
| 113 | 1.25 | ENTREGA 11 SEMANA | milestone | 0d | 2025-12-05 | 2025-12-05 |
| 114 | 1.26 | ENTREGA 12 SEMANA | milestone | 0d | 2025-12-12 | 2025-12-12 |
| 115 | 1.27 | ENTREGA 13 SEMANA | milestone | 0d | 2025-12-19 | 2025-12-19 |
| 116 | 1.28 | ENTREGA 14 SEMANA | milestone | 0d | 2026-01-09 | 2026-01-09 |
| 117 | 1.29 | ENTREGA 15 SEMANA | milestone | 0d | 2026-01-16 | 2026-01-16 |
| 118 | 1.30 | ENTREGA 16 SEMANA | milestone | 0d | 2026-01-21 | 2026-01-21 |
| 119 | 1.31 | ENTREGA FINAL | milestone | 0d | 2026-02-06 | 2026-02-06 |
